# 新产品

How a schedule from MS Project changed from version to version. A marks actual dates.

## Version 1 (saved 2008-03-08, file 2.1-任务列表-WBS-任务类型2024040517041206_收图附件.mpp)

Note of the change: 泰顶项目综合管理平台源码仓库

| ID | WBS | Task | Duration | Start | Finish | Total float |
| --- | --- | --- | --- | --- | --- | --- |
| 1 | 1 | **新产品开发模板** | 1d | 2007-01-01 | 2007-01-01 | 0d |
| 2 | 1.1 | **新产品的初步筛选阶段** | 1d | 2007-01-01 | 2007-01-01 | 0d |
| 3 |  | 确定新产品的市场机会 | 1d | 2007-01-01 | 2007-01-01 | 0d |
| 4 |  | 说明新产品设想(一页书面形式的披露材料) | 1d | 2007-01-01 | 2007-01-01 | 0d |
| 5 |  | 为进行可行性决策搜集信息 | 1d | 2007-01-01 | 2007-01-01 | 0d |
| 6 |  | 召开筛选委员会会议(决策是否采纳设想) | 1d | 2007-01-01 | 2007-01-01 | 0d |
| 7 |  | 决策点: 是否进行初步研究 | 1d | 2007-01-01 | 2007-01-01 | 0d |
| 8 | 1.2 | **初步研究阶段** | 1d | 2007-01-01 | 2007-01-01 | 0d |
| 9 |  | 为初步研究分配资源 | 1d | 2007-01-01 | 2007-01-01 | 0d |
| 10 |  | 制定初步研究计划 | 1d | 2007-01-01 | 2007-01-01 | 0d |
| 11 |  | 对市场进行评估 | 1d | 2007-01-01 | 2007-01-01 | 0d |
| 12 |  | 分析竞争情况 | 1d | 2007-01-01 | 2007-01-01 | 0d |
| 13 | 1.2.5 | **技术可行性分析** | 1d | 2007-01-01 | 2007-01-01 | 0d |
| 14 |  | 生产实验室规模的产品 | 1d | 2007-01-01 | 2007-01-01 | 0d |
| 15 |  | 评估内部产品 | 1d | 2007-01-01 | 2007-01-01 | 0d |
| 16 |  | 确定生产所需的加工过程 | 1d | 2007-01-01 | 2007-01-01 | 0d |
| 17 |  | 评估生产能力 | 1d | 2007-01-01 | 2007-01-01 | 0d |
| 18 |  | 确定安全因素 | 1d | 2007-01-01 | 2007-01-01 | 0d |
| 19 |  | 确定环境因素 | 1d | 2007-01-01 | 2007-01-01 | 0d |
| 20 |  | 检查法律问题 | 1d | 2007-01-01 | 2007-01-01 | 0d |
| 21 |  | 进行财务评估 | 1d | 2007-01-01 | 2007-01-01 | 0d |
| 22 |  | 进行风险分析 | 1d | 2007-01-01 | 2007-01-01 | 0d |
| 23 |  | 起草初步开发阶段计划 | 1d | 2007-01-01 | 2007-01-01 | 0d |
| 24 |  | 做出初步研究阶段的决策 | 1d | 2007-01-01 | 2007-01-01 | 0d |
| 25 |  | 决策点: 是否进入开发阶段 | 1d | 2007-01-01 | 2007-01-01 | 0d |
| 26 | 1.3 | **开发阶段** | 1d | 2007-01-01 | 2007-01-01 | 0d |
| 27 |  | 为开发阶段计划分配资源 | 1d | 2007-01-01 | 2007-01-01 | 0d |
| 28 | 1.3.2 | **市场评估** | 1d | 2007-01-01 | 2007-01-01 | 0d |
| 29 |  | 搜集市场信息 | 1d | 2007-01-01 | 2007-01-01 | 0d |
| 30 |  | 确定并联系抽样用户群 | 1d | 2007-01-01 | 2007-01-01 | 0d |
| 31 |  | 进行竞争者分析 | 1d | 2007-01-01 | 2007-01-01 | 0d |
| 32 |  | 重新定义产品需求 | 1d | 2007-01-01 | 2007-01-01 | 0d |
| 33 | 1.3.3 | **产品技术评估** | 1d | 2007-01-01 | 2007-01-01 | 0d |
| 34 |  | 确定产品特征(性能标准) | 1d | 2007-01-01 | 2007-01-01 | 0d |
| 35 |  | 研究原型生产过程 | 1d | 2007-01-01 | 2007-01-01 | 0d |
| 36 |  | 生产原型产品 | 1d | 2007-01-01 | 2007-01-01 | 0d |
| 37 |  | 进行内部产品审查 | 1d | 2007-01-01 | 2007-01-01 | 0d |
| 38 |  | 为专利申请过程建立档案 | 1d | 2007-01-01 | 2007-01-01 | 0d |
| 39 |  | 进行市场/技术审查 | 1d | 2007-01-01 | 2007-01-01 | 0d |
| 40 |  | 重新设计生产过程(如果必要) | 1d | 2007-01-01 | 2007-01-01 | 0d |
| 41 |  | 修改原型生产过程 | 1d | 2007-01-01 | 2007-01-01 | 0d |
| 42 |  | 制定用户产品测试计划 | 1d | 2007-01-01 | 2007-01-01 | 0d |
| 43 |  | 生产用于用户测试的产品 | 1d | 2007-01-01 | 2007-01-01 | 0d |
| 44 |  | 审查初步的生产过程 | 1d | 2007-01-01 | 2007-01-01 | 0d |
| 45 |  | 展开用户对原型产品的测试 | 1d | 2007-01-01 | 2007-01-01 | 0d |
| 46 | 1.3.4 | **概念评估** | 1d | 2007-01-01 | 2007-01-01 | 0d |
| 47 |  | 进行市场/技术审查 | 1d | 2007-01-01 | 2007-01-01 | 0d |
| 48 |  | 准备初步的生产设计 | 1d | 2007-01-01 | 2007-01-01 | 0d |
| 49 |  | 评估可供选择的外包生产方案 | 1d | 2007-01-01 | 2007-01-01 | 0d |
| 50 |  | 审查法律和专利方面的问题 | 1d | 2007-01-01 | 2007-01-01 | 0d |
| 51 |  | 审查环境问题 | 1d | 2007-01-01 | 2007-01-01 | 0d |
| 52 |  | 审查产品安全性 | 1d | 2007-01-01 | 2007-01-01 | 0d |
| 53 |  | 评估/预测产品生命周期 | 1d | 2007-01-01 | 2007-01-01 | 0d |
| 54 |  | 更新财政分析 | 1d | 2007-01-01 | 2007-01-01 | 0d |
| 55 |  | 风险分析 | 1d | 2007-01-01 | 2007-01-01 | 0d |
| 56 |  | 审查初步的研究标准 | 1d | 2007-01-01 | 2007-01-01 | 0d |
| 57 |  | 制定试生产阶段计划 | 1d | 2007-01-01 | 2007-01-01 | 0d |
| 58 |  | 进行开发阶段审查 | 1d | 2007-01-01 | 2007-01-01 | 0d |
| 59 |  | 决策点: 是否进入试生产阶段 | 1d | 2007-01-01 | 2007-01-01 | 0d |
| 60 | 1.4 | **试生产阶段** | 1d | 2007-01-01 | 2007-01-01 | 0d |
| 61 |  | 为试生产阶段分配资源 | 1d | 2007-01-01 | 2007-01-01 | 0d |
| 62 |  | 确保用户能参予商品化试验阶段的工作 | 1d | 2007-01-01 | 2007-01-01 | 0d |
| 63 | 1.4.3 | **试生产** | 1d | 2007-01-01 | 2007-01-01 | 0d |
| 64 |  | 排定日程/保留试生产所需的设施 | 1d | 2007-01-01 | 2007-01-01 | 0d |
| 65 |  | 解决原材料和成品的后勤问题 | 1d | 2007-01-01 | 2007-01-01 | 0d |
| 66 |  | 复查试生产计划和要求 | 1d | 2007-01-01 | 2007-01-01 | 0d |
| 67 |  | 开始试生产 | 1d | 2007-01-01 | 2007-01-01 | 0d |
| 68 |  | 监控用户试用情况 | 1d | 2007-01-01 | 2007-01-01 | 0d |
| 69 |  | 审查初步试生产的结果 | 1d | 2007-01-01 | 2007-01-01 | 0d |
| 70 |  | 继续试生产 | 1d | 2007-01-01 | 2007-01-01 | 0d |

| ID | WBS | Task | Duration | Start | Finish | Total float |
| --- | --- | --- | --- | --- | --- | --- |
| 71 |  | 完成对用户试用情况的监控 | 1d | 2007-01-01 | 2007-01-01 | 0d |
| 72 | 1.4.4 | **试验结果分析** | 1d | 2007-01-01 | 2007-01-01 | 0d |
| 73 |  | 确认销售和营销策略 | 1d | 2007-01-01 | 2007-01-01 | 0d |
| 74 |  | 确认产品的安全性 | 1d | 2007-01-01 | 2007-01-01 | 0d |
| 75 |  | 重新评估生产过程 | 1d | 2007-01-01 | 2007-01-01 | 0d |
| 76 |  | 制定商品化计划 | 1d | 2007-01-01 | 2007-01-01 | 0d |
| 77 |  | 复查财务状况 | 1d | 2007-01-01 | 2007-01-01 | 0d |
| 78 |  | 复查专利和法律问题 | 1d | 2007-01-01 | 2007-01-01 | 0d |
| 79 |  | 指定商品化过程的领导职责和资源 | 1d | 2007-01-01 | 2007-01-01 | 0d |
| 80 |  | 对试生产阶段进行审查并做出商品化决策 | 1d | 2007-01-01 | 2007-01-01 | 0d |
| 81 | 1.5 | **商品化阶段** | 1d | 2007-01-01 | 2007-01-01 | 0d |
| 82 | 1.5.1 | **产品的生产和监控** | 1d | 2007-01-01 | 2007-01-01 | 0d |
| 83 |  | 确认产品规范 | 1d | 2007-01-01 | 2007-01-01 | 0d |
| 84 |  | 确认用户对规范的接受程度并参与试验 | 1d | 2007-01-01 | 2007-01-01 | 0d |
| 85 |  | 确定生产过程的要求 | 1d | 2007-01-01 | 2007-01-01 | 0d |
| 86 |  | 设计和定购新的设备 | 1d | 2007-01-01 | 2007-01-01 | 0d |
| 87 |  | 安装并测试新的设备或改装的设备 | 1d | 2007-01-01 | 2007-01-01 | 0d |
| 88 |  | 确认生产能力 | 1d | 2007-01-01 | 2007-01-01 | 0d |
| 89 |  | 制定并审查生产试验计划(解决后勤问题) | 1d | 2007-01-01 | 2007-01-01 | 0d |
| 90 |  | 开始商业产量的生产 | 1d | 2007-01-01 | 2007-01-01 | 0d |
| 91 |  | 监控用户接受程度试验 | 1d | 2007-01-01 | 2007-01-01 | 0d |
| 92 | 1.5.2 | **商品化分析** | 1d | 2007-01-01 | 2007-01-01 | 0d |
| 93 |  | 进行内部产品测试 | 1d | 2007-01-01 | 2007-01-01 | 0d |
| 94 |  | 审查生产业绩 | 1d | 2007-01-01 | 2007-01-01 | 0d |
| 95 |  | 确定长期生产需求 | 1d | 2007-01-01 | 2007-01-01 | 0d |
| 96 |  | 重新计算产品经济效益 | 1d | 2007-01-01 | 2007-01-01 | 0d |
| 97 |  | 确认继续进行商品化的决策 | 1d | 2007-01-01 | 2007-01-01 | 0d |
| 98 | 1.6 | **商品化完成后的回顾** | 1d | 2007-01-01 | 2007-01-01 | 0d |
| 99 |  | 确定产品是否达到用户对成本/性能比的期望 | 1d | 2007-01-01 | 2007-01-01 | 0d |
| 100 |  | 确定销售是否达到了预期值 | 1d | 2007-01-01 | 2007-01-01 | 0d |
| 101 |  | 确定产品在竞争对手做出反应的情况下是否保持了市场份额 | 1d | 2007-01-01 | 2007-01-01 | 0d |
| 102 |  | 评估生产过程的稳定性和成本效益 | 1d | 2007-01-01 | 2007-01-01 | 0d |
| 103 |  | 确定当前的经济状况是否与预期的经济状况相一致 | 1d | 2007-01-01 | 2007-01-01 | 0d |
| 104 |  | 评估扩大产品和产品线的可能性 | 1d | 2007-01-01 | 2007-01-01 | 0d |

## Version 2 (data date 2007-01-20, saved 2008-03-08, file 8-任务列表-WBS-工期-依赖关系-限制-工作分配-基线-跟踪2024040517043173_文件附件.mpp)

Note of the change: 泰顶项目综合管理平台源码仓库

Last finish 2007-01-01 → 2009-12-21 (+1085d). Complete tasks 0 → 8.

Changed:

| ID | Task | Start | Finish | Duration | Complete | Total float | Predecessors | Other |
| --- | --- | --- | --- | --- | --- | --- | --- | --- |
| 1 | **新产品开发模板** | 2007-01-01 A | 2007-01-01 → 2009-12-21 (+1085d) | 1d → 853.5d | 0% → 3% |  |  | baseline start none → 2007-01-01; baseline finish none → 2009-12-10 |
| 2 | **新产品的初步筛选阶段** | 2007-01-01 A | 2007-01-01 → 2007-01-11 A (+10d) | 1d → 9.5d | 0% → 100% | 0d → none |  | baseline start none → 2007-01-01; baseline finish none → 2007-01-11 |
| 3 | 确定新产品的市场机会 | 2007-01-01 A | 2007-01-01 A | 1d → 0d | 0% → 100% | 0d → none |  | resources none → 管理人员; 产品工程设计; baseline start none → 2007-01-01; baseline finish none → 2007-01-01 |
| 4 | 说明新产品设想(一页书面形式的披露材料) | 2007-01-01 A | 2007-01-01 → 2007-01-02 A (+1d) | 1d → 2d | 0% → 100% | 0d → none | none → 3 | resources none → 产品工程设计; baseline start none → 2007-01-01; baseline finish none → 2007-01-02 |
| 5 | 为进行可行性决策搜集信息 | 2007-01-01 → 2007-01-03 A (+2d) | 2007-01-01 → 2007-01-10 A (+9d) | 1d → 6d | 0% → 100% | 0d → none | none → 4 | resources none → 产品工程设计; baseline start none → 2007-01-03; baseline finish none → 2007-01-10 |
| 6 | 召开筛选委员会会议(决策是否采纳设想) | 2007-01-01 → 2007-01-11 A (+10d) | 2007-01-01 → 2007-01-11 A (+10d) |  | 0% → 100% | 0d → none | none → 5 | resources none → 产品工程设计; baseline start none → 2007-01-11; baseline finish none → 2007-01-11 |
| 7 | 决策点: 是否进行初步研究 | 2007-01-01 → 2007-01-11 A (+10d) | 2007-01-01 → 2007-01-11 A (+10d) | 1d → 0d | 0% → 100% | 0d → none | none → 6 | resources none → 管理人员; 产品工程设计; baseline start none → 2007-01-11; baseline finish none → 2007-01-11 |
| 8 | **初步研究阶段** | 2007-01-01 → 2007-01-12 A (+11d) | 2007-01-01 → 2007-04-10 (+99d) | 1d → 69.5d | 0% → 20% | 0d → 774.5d |  | baseline start none → 2007-01-12; baseline finish none → 2007-03-30 |
| 9 | 为初步研究分配资源 | 2007-01-01 → 2007-01-12 A (+11d) | 2007-01-01 → 2007-01-12 A (+11d) |  | 0% → 100% | 0d → none | none → 7 | resources none → 管理人员; baseline start none → 2007-01-12; baseline finish none → 2007-01-12 |
| 10 | 制定初步研究计划 | 2007-01-01 → 2007-01-15 A (+14d) | 2007-01-01 → 2007-01-19 A (+18d) | 1d → 5d | 0% → 100% | 0d → none | none → 9 | resources none → 产品工程设计; 项目经理; baseline start none → 2007-01-15; baseline finish none → 2007-01-19 |
| 11 | 对市场进行评估 | 2007-01-01 → 2007-01-15 A (+14d) | 2007-01-01 → 2007-01-26 (+25d) | 1d → 10d | 0% → 50% | 0d → 832d | none → 9 | resources none → 市场; baseline start none → 2007-01-15; baseline finish none → 2007-01-26 |
| 12 | 分析竞争情况 | 2007-01-01 → 2007-01-15 A (+14d) | 2007-01-01 → 2007-01-19 A (+18d) | 1d → 5d | 0% → 100% | 0d → none | none → 9 | resources none → 市场; baseline start none → 2007-01-15; baseline finish none → 2007-01-19 |
| 13 | **技术可行性分析** | 2007-01-01 → 2007-01-29 A (+28d) | 2007-01-01 → 2007-03-02 (+60d) | 1d → 27d | 0% → 28% |  |  | baseline start none → 2007-01-25; baseline finish none → 2007-02-21 |
| 14 | 生产实验室规模的产品 | 2007-01-01 → 2007-01-29 A (+28d) | 2007-01-01 → 2007-02-16 (+46d) | 1d → 15d | 0% → 47% |  | none → 12 | constraint none → start no earlier than 2007-01-25; resources none → 产品工程设计; baseline start none → 2007-01-25; baseline finish none → 2007-02-07 |
| 15 | 评估内部产品 | 2007-01-01 → 2007-02-19 (+49d) | 2007-01-01 → 2007-02-23 (+53d) | 1d → 5d |  |  | none → 14 | resources none → 产品工程设计; baseline start none → 2007-02-08; baseline finish none → 2007-02-14 |
| 16 | 确定生产所需的加工过程 | 2007-01-01 → 2007-02-26 (+56d) | 2007-01-01 → 2007-03-02 (+60d) | 1d → 5d |  |  | none → 15 | resources none → 加工工程师; baseline start none → 2007-02-15; baseline finish none → 2007-02-21 |
| 17 | 评估生产能力 | 2007-01-01 → 2007-03-05 (+63d) | 2007-01-01 → 2007-03-16 (+74d) | 1d → 10d |  |  | none → 16 | resources none → 产品工程设计; 生产工程师; baseline start none → 2007-02-22; baseline finish none → 2007-03-07 |
| 18 | 确定安全因素 | 2007-01-01 → 2007-03-05 (+63d) | 2007-01-01 → 2007-03-16 (+74d) | 1d → 10d |  |  | none → 17SS | resources none → 安全; baseline start none → 2007-02-22; baseline finish none → 2007-03-07 |
| 19 | 确定环境因素 | 2007-01-01 → 2007-03-05 (+63d) | 2007-01-01 → 2007-03-16 (+74d) | 1d → 10d |  |  | none → 18SS | resources none → 产品工程设计; 法律; baseline start none → 2007-02-22; baseline finish none → 2007-03-07 |
| 20 | 检查法律问题 | 2007-01-01 → 2007-03-05 (+63d) | 2007-01-01 → 2007-03-16 (+74d) | 1d → 10d |  |  | none → 19SS | resources none → 法律; 项目经理; baseline start none → 2007-02-22; baseline finish none → 2007-03-07 |
| 21 | 进行财务评估 | 2007-01-01 → 2007-03-19 (+77d) | 2007-01-01 → 2007-03-30 (+88d) | 1d → 10d |  |  | none → 20, 17, 18, 19 | resources none → 会计; baseline start none → 2007-03-08; baseline finish none → 2007-03-21 |
| 22 | 进行风险分析 | 2007-01-01 → 2007-04-02 (+91d) | 2007-01-01 → 2007-04-06 (+95d) | 1d → 5d |  |  | none → 21 | resources none → 产品工程设计; 项目经理; baseline start none → 2007-03-22; baseline finish none → 2007-03-28 |
| 23 | 起草初步开发阶段计划 | 2007-01-01 → 2007-03-19 (+77d) | 2007-01-01 → 2007-03-30 (+88d) | 1d → 10d |  | 0d → 5d | none → 21SS | resources none → 产品工程设计; baseline start none → 2007-03-08; baseline finish none → 2007-03-21 |
| 24 | 做出初步研究阶段的决策 | 2007-01-01 → 2007-04-09 (+98d) | 2007-01-01 → 2007-04-10 (+99d) | 1d → 2d |  |  | none → 22, 23 | resources none → 管理人员; 产品工程设计; 项目经理; baseline start none → 2007-03-29; baseline finish none → 2007-03-30 |
| 25 | 决策点: 是否进入开发阶段 | 2007-01-01 → 2007-04-10 (+99d) | 2007-01-01 → 2007-04-10 (+99d) | 1d → 0d |  | 0d → 704d | none → 24 | resources none → 管理人员; 项目经理; baseline start none → 2007-03-30; baseline finish none → 2007-03-30 |
| 26 | **开发阶段** | 2007-01-01 → 2007-04-11 (+100d) | 2007-01-01 → 2008-04-14 (+469d) | 1d → 290.5d |  |  |  | baseline start none → 2007-04-02; baseline finish none → 2008-04-03 |
| 27 | 为开发阶段计划分配资源 | 2007-01-01 → 2007-04-11 (+100d) | 2007-01-01 → 2007-04-11 (+100d) |  |  |  | none → 24 | resources none → 管理人员; 项目经理; baseline start none → 2007-04-02; baseline finish none → 2007-04-02 |
| 28 | **市场评估** | 2007-01-01 → 2007-04-12 (+101d) | 2007-01-01 → 2007-06-06 (+156d) | 1d → 44d |  | 0d → 2d |  | baseline start none → 2007-04-03; baseline finish none → 2007-05-28 |
| 29 | 搜集市场信息 | 2007-01-01 → 2007-04-12 (+101d) | 2007-01-01 → 2007-05-02 (+121d) | 1d → 15d |  | 0d → 2d | none → 27 | resources none → 产品工程设计; 市场; baseline start none → 2007-04-03; baseline finish none → 2007-04-23 |
| 30 | 确定并联系抽样用户群 | 2007-01-01 → 2007-05-03 (+122d) | 2007-01-01 → 2007-05-09 (+128d) | 1d → 5d |  | 0d → 12d | none → 29 | resources none → 市场; baseline start none → 2007-04-24; baseline finish none → 2007-04-30 |
| 31 | 进行竞争者分析 | 2007-01-01 → 2007-05-03 (+122d) | 2007-01-01 → 2007-05-23 (+142d) | 1d → 15d |  | 0d → 2d | none → 29 | resources none → 市场; baseline start none → 2007-04-24; baseline finish none → 2007-05-14 |
| 32 | 重新定义产品需求 | 2007-01-01 → 2007-05-24 (+143d) | 2007-01-01 → 2007-06-06 (+156d) | 1d → 10d |  | 0d → 2d | none → 30, 31 | resources none → 产品工程设计; baseline start none → 2007-05-15; baseline finish none → 2007-05-28 |
| 33 | **产品技术评估** | 2007-01-01 → 2007-04-12 (+101d) | 2007-01-01 → 2008-01-22 (+386d) | 1d → 224.5d |  |  |  | baseline start none → 2007-04-03; baseline finish none → 2008-01-11 |
| 34 | 确定产品特征(性能标准) | 2007-01-01 → 2007-04-12 (+101d) | 2007-01-01 → 2007-04-13 (+102d) | 1d → 2d |  |  | none → 27 | resources none → 产品工程设计; baseline start none → 2007-04-03; baseline finish none → 2007-04-04 |
| 35 | 研究原型生产过程 | 2007-01-01 → 2007-04-16 (+105d) | 2007-01-01 → 2007-04-27 (+116d) | 1d → 10d |  |  | none → 34 | resources none → 产品工程设计; baseline start none → 2007-04-05; baseline finish none → 2007-04-18 |
| 36 | 生产原型产品 | 2007-01-01 → 2007-04-30 (+119d) | 2007-01-01 → 2007-06-01 (+151d) | 1d → 25d |  |  | none → 35 | resources none → 产品工程设计; baseline start none → 2007-04-19; baseline finish none → 2007-05-23 |
| 37 | 进行内部产品审查 | 2007-01-01 → 2007-06-04 (+154d) | 2007-01-01 → 2007-06-08 (+158d) | 1d → 5d |  |  | none → 36 | resources none → 管理人员; 产品工程设计; baseline start none → 2007-05-24; baseline finish none → 2007-05-30 |
| 38 | 为专利申请过程建立档案 | 2007-01-01 → 2007-04-16 (+105d) | 2007-01-01 → 2007-04-27 (+116d) | 1d → 10d |  | 0d → 229d | none → 34 | resources none → 产品工程设计; baseline start none → 2007-04-05; baseline finish none → 2007-04-18 |
| 39 | 进行市场/技术审查 | 2007-01-01 → 2007-06-11 (+161d) | 2007-01-01 → 2007-10-16 (+288d) | 1d → 92d |  |  | none → 37, 32 | resources none → 市场; 产品工程设计; baseline start none → 2007-05-31; baseline finish none → 2007-10-05 |
| 40 | 重新设计生产过程(如果必要) | 2007-01-01 → 2007-10-17 (+289d) | 2007-01-01 → 2007-10-30 (+302d) | 1d → 10d |  |  | none → 39 | resources none → 产品工程设计; 加工工程师; baseline start none → 2007-10-08; baseline finish none → 2007-10-19 |
| 41 | 修改原型生产过程 | 2007-01-01 → 2007-10-31 (+303d) | 2007-01-01 → 2007-11-20 (+323d) | 1d → 15d |  |  | none → 40 | resources none → 加工工程师; baseline start none → 2007-10-22; baseline finish none → 2007-11-09 |
| 42 | 制定用户产品测试计划 | 2007-01-01 → 2007-11-21 (+324d) | 2007-01-01 → 2007-11-27 (+330d) | 1d → 5d |  | 0d → 20d | none → 41 | resources none → 项目经理; baseline start none → 2007-11-12; baseline finish none → 2007-11-16 |
| 43 | 生产用于用户测试的产品 | 2007-01-01 → 2007-11-21 (+324d) | 2007-01-01 → 2007-12-25 (+358d) | 1d → 25d |  |  | none → 41 | resources none → 产品工程设计; 市场; 项目经理; baseline start none → 2007-11-12; baseline finish none → 2007-12-14 |
| 44 | 审查初步的生产过程 | 2007-01-01 → 2007-12-26 (+359d) | 2007-01-01 → 2008-01-08 (+372d) | 1d → 10d |  | 0d → 10d | none → 43 | resources none → 加工工程师; 生产工程师; baseline start none → 2007-12-17; baseline finish none → 2007-12-28 |
| 45 | 展开用户对原型产品的测试 | 2007-01-01 → 2007-12-26 (+359d) | 2007-01-01 → 2008-01-22 (+386d) | 1d → 20d |  |  | none → 43, 42 | resources none → 产品工程设计; 项目经理; 用户; baseline start none → 2007-12-17; baseline finish none → 2008-01-11 |
| 46 | **概念评估** | 2007-01-01 → 2008-01-23 (+387d) | 2007-01-01 → 2008-04-10 (+465d) | 1d → 62.5d |  |  |  | baseline start none → 2008-01-14; baseline finish none → 2008-04-01 |
| 47 | 进行市场/技术审查 | 2007-01-01 → 2008-01-23 (+387d) | 2007-01-01 → 2008-01-24 (+388d) | 1d → 2d |  |  | none → 45, 44 | resources none → 管理人员; 产品工程设计; 市场; baseline start none → 2008-01-14; baseline finish none → 2008-01-15 |
| 48 | 准备初步的生产设计 | 2007-01-01 → 2008-01-25 (+389d) | 2007-01-01 → 2008-02-21 (+416d) | 1d → 20d |  |  | none → 47 | resources none → 产品工程设计; baseline start none → 2008-01-16; baseline finish none → 2008-02-12 |
| 49 | 评估可供选择的外包生产方案 | 2007-01-01 → 2008-02-22 (+417d) | 2007-01-01 → 2008-03-06 (+430d) | 1d → 10d |  | 0d → 467d | none → 48 | resources none → 法律; 加工工程师; baseline start none → 2008-02-13; baseline finish none → 2008-02-26 |
| 50 | 审查法律和专利方面的问题 | 2007-01-01 → 2008-01-25 (+389d) | 2007-01-01 → 2008-02-07 (+402d) | 1d → 10d |  | 0d → 35d | none → 47, 38 | resources none → 管理人员; 法律; baseline start none → 2008-01-16; baseline finish none → 2008-01-29 |
| 51 | 审查环境问题 | 2007-01-01 → 2008-02-22 (+417d) | 2007-01-01 → 2008-03-06 (+430d) | 1d → 10d |  | 0d → 5d | none → 48 | resources none → 产品工程设计; baseline start none → 2008-02-13; baseline finish none → 2008-02-26 |
| 52 | 审查产品安全性 | 2007-01-01 → 2008-01-25 (+389d) | 2007-01-01 → 2008-02-14 (+409d) | 1d → 15d |  | 0d → 20d | none → 47 | resources none → 产品工程设计; 安全; baseline start none → 2008-01-16; baseline finish none → 2008-02-05 |
| 53 | 评估/预测产品生命周期 | 2007-01-01 → 2008-02-22 (+417d) | 2007-01-01 → 2008-03-13 (+437d) | 1d → 15d |  |  | none → 48 | resources none → 产品工程设计; 项目经理; baseline start none → 2008-02-13; baseline finish none → 2008-03-04 |
| 54 | 更新财政分析 | 2007-01-01 → 2008-03-14 (+438d) | 2007-01-01 → 2008-03-27 (+451d) | 1d → 10d |  |  | none → 53, 52, 51, 57 | resources none → 会计; baseline start none → 2008-03-05; baseline finish none → 2008-03-18 |
| 55 | 风险分析 | 2007-01-01 → 2008-03-28 (+452d) | 2007-01-01 → 2008-04-10 (+465d) | 1d → 10d |  |  | none → 50, 54, 52 | resources none → 产品工程设计; baseline start none → 2008-03-19; baseline finish none → 2008-04-01 |
| 56 | 审查初步的研究标准 | 2007-01-01 → 2008-03-28 (+452d) | 2007-01-01 → 2008-03-31 (+455d) | 1d → 2d |  | 0d → 8d | none → 54 | resources none → 管理人员; 产品工程设计; 法律; baseline start none → 2008-03-19; baseline finish none → 2008-03-20 |
| 57 | 制定试生产阶段计划 | 2007-01-01 → 2008-01-25 (+389d) | 2007-01-01 → 2008-01-31 (+395d) | 1d → 5d |  | 0d → 30d | none → 48SS | resources none → 产品工程设计; 项目经理; baseline start none → 2008-01-16; baseline finish none → 2008-01-22 |
| 58 | 进行开发阶段审查 | 2007-01-01 → 2008-04-11 (+466d) | 2007-01-01 → 2008-04-14 (+469d) | 1d → 2d |  |  | none → 55, 56, 57 | resources none → 产品工程设计; 项目经理; 加工工程师; baseline start none → 2008-04-02; baseline finish none → 2008-04-03 |
| 59 | 决策点: 是否进入试生产阶段 | 2007-01-01 → 2008-04-14 (+469d) | 2007-01-01 → 2008-04-14 (+469d) | 1d → 0d |  |  | none → 58 | resources none → 管理人员; 项目经理; baseline start none → 2008-04-03; baseline finish none → 2008-04-03 |
| 60 | **试生产阶段** | 2007-01-01 → 2008-04-15 (+470d) | 2007-01-01 → 2008-09-22 (+630d) | 1d → 126.5d |  |  |  | baseline start none → 2008-04-04; baseline finish none → 2008-09-11 |
| 61 | 为试生产阶段分配资源 | 2007-01-01 → 2008-04-15 (+470d) | 2007-01-01 → 2008-04-15 (+470d) |  |  |  | none → 58, 59 | resources none → 管理人员; 项目经理; baseline start none → 2008-04-04; baseline finish none → 2008-04-04 |
| 62 | 确保用户能参予商品化试验阶段的工作 | 2007-01-01 → 2008-04-16 (+471d) | 2007-01-01 → 2008-04-22 (+477d) | 1d → 5d |  |  | none → 61 | resources none → 法律; 项目经理; baseline start none → 2008-04-07; baseline finish none → 2008-04-11 |
| 63 | **试生产** | 2007-01-01 → 2008-04-23 (+478d) | 2007-01-01 → 2008-07-29 (+575d) | 1d → 77d |  |  |  | baseline start none → 2008-04-14; baseline finish none → 2008-07-18 |
| 64 | 排定日程/保留试生产所需的设施 | 2007-01-01 → 2008-04-23 (+478d) | 2007-01-01 → 2008-04-29 (+484d) | 1d → 5d |  |  | none → 62 | resources none → 项目经理; baseline start none → 2008-04-14; baseline finish none → 2008-04-18 |
| 65 | 解决原材料和成品的后勤问题 | 2007-01-01 → 2008-04-30 (+485d) | 2007-01-01 → 2008-05-06 (+491d) | 1d → 5d |  |  | none → 64 | resources none → 产品工程设计; 项目经理; baseline start none → 2008-04-21; baseline finish none → 2008-04-25 |
| 66 | 复查试生产计划和要求 | 2007-01-01 → 2008-04-23 (+478d) | 2007-01-01 → 2008-04-29 (+484d) | 1d → 5d |  | 0d → 5d | none → 62 | resources none → 产品工程设计; 项目经理; baseline start none → 2008-04-14; baseline finish none → 2008-04-18 |
| 67 | 开始试生产 | 2007-01-01 → 2008-05-07 (+492d) | 2007-01-01 → 2008-06-17 (+533d) | 1d → 30d |  |  | none → 65, 66 | resources none → 产品工程设计; baseline start none → 2008-04-28; baseline finish none → 2008-06-06 |
| 68 | 监控用户试用情况 | 2007-01-01 → 2008-05-07 (+492d) | 2007-01-01 → 2008-06-03 (+519d) | 1d → 20d |  |  | none → 67SS | resources none → 产品工程设计; baseline start none → 2008-04-28; baseline finish none → 2008-05-23 |
| 69 | 审查初步试生产的结果 | 2007-01-01 → 2008-06-04 (+520d) | 2007-01-01 → 2008-06-17 (+533d) | 1d → 10d |  |  | none → 68 | resources none → 产品工程设计; 项目经理; baseline start none → 2008-05-26; baseline finish none → 2008-06-06 |
| 70 | 继续试生产 | 2007-01-01 → 2008-06-18 (+534d) | 2007-01-01 → 2008-07-29 (+575d) | 1d → 30d |  |  | none → 69 | resources none → 产品工程设计; baseline start none → 2008-06-09; baseline finish none → 2008-07-18 |

| ID | Task | Start | Finish | Duration | Total float | Predecessors | Other |
| --- | --- | --- | --- | --- | --- | --- | --- |
| 71 | 完成对用户试用情况的监控 | 2007-01-01 → 2008-06-18 (+534d) | 2007-01-01 → 2008-07-15 (+561d) | 1d → 20d |  | none → 70SS | resources none → 产品工程设计; baseline start none → 2008-06-09; baseline finish none → 2008-07-04 |
| 72 | **试验结果分析** | 2007-01-01 → 2008-07-16 (+562d) | 2007-01-01 → 2008-09-22 (+630d) | 1d → 54d |  |  | baseline start none → 2008-07-07; baseline finish none → 2008-09-11 |
| 73 | 确认销售和营销策略 | 2007-01-01 → 2008-07-16 (+562d) | 2007-01-01 → 2008-07-22 (+568d) | 1d → 5d |  | none → 71 | resources none → 市场; 项目经理; baseline start none → 2008-07-07; baseline finish none → 2008-07-11 |
| 74 | 确认产品的安全性 | 2007-01-01 → 2008-07-16 (+562d) | 2007-01-01 → 2008-07-22 (+568d) | 1d → 5d |  | none → 73SS | resources none → 项目经理; 安全; baseline start none → 2008-07-07; baseline finish none → 2008-07-11 |
| 75 | 重新评估生产过程 | 2007-01-01 → 2008-07-23 (+569d) | 2007-01-01 → 2008-08-12 (+589d) | 1d → 15d |  | none → 73, 74 | resources none → 加工工程师; baseline start none → 2008-07-14; baseline finish none → 2008-08-01 |
| 76 | 制定商品化计划 | 2007-01-01 → 2008-08-13 (+590d) | 2007-01-01 → 2008-09-02 (+610d) | 1d → 15d |  | none → 75 | resources none → 产品工程设计; 市场; baseline start none → 2008-08-04; baseline finish none → 2008-08-22 |
| 77 | 复查财务状况 | 2007-01-01 → 2008-09-03 (+611d) | 2007-01-01 → 2008-09-09 (+617d) | 1d → 5d | 0d → 5d | none → 76 | resources none → 会计; baseline start none → 2008-08-25; baseline finish none → 2008-08-29 |
| 78 | 复查专利和法律问题 | 2007-01-01 → 2008-09-03 (+611d) | 2007-01-01 → 2008-09-16 (+624d) | 1d → 10d |  | none → 76 | resources none → 法律; baseline start none → 2008-08-25; baseline finish none → 2008-09-05 |
| 79 | 指定商品化过程的领导职责和资源 | 2007-01-01 → 2008-09-17 (+625d) | 2007-01-01 → 2008-09-18 (+626d) | 1d → 2d |  | none → 77, 78 | resources none → 管理人员; 项目经理; baseline start none → 2008-09-08; baseline finish none → 2008-09-09 |
| 80 | 对试生产阶段进行审查并做出商品化决策 | 2007-01-01 → 2008-09-19 (+627d) | 2007-01-01 → 2008-09-22 (+630d) | 1d → 2d |  | none → 79 | resources none → 管理人员; 产品工程设计; 市场; 加工工程师; baseline start none → 2008-09-10; baseline finish none → 2008-09-11 |
| 81 | **商品化阶段** | 2007-01-01 → 2008-09-23 (+631d) | 2007-01-01 → 2009-06-22 (+903d) | 1d → 214.5d |  |  | baseline start none → 2008-09-12; baseline finish none → 2009-06-11 |
| 82 | **产品的生产和监控** | 2007-01-01 → 2008-09-23 (+631d) | 2007-01-01 → 2009-05-14 (+864d) | 1d → 184.5d |  |  | baseline start none → 2008-09-12; baseline finish none → 2009-05-05 |
| 83 | 确认产品规范 | 2007-01-01 → 2008-09-23 (+631d) | 2007-01-01 → 2008-09-25 (+633d) | 1d → 3d |  | none → 80 | resources none → 产品工程设计; 生产工程师; baseline start none → 2008-09-12; baseline finish none → 2008-09-16 |
| 84 | 确认用户对规范的接受程度并参与试验 | 2007-01-01 → 2008-09-26 (+634d) | 2007-01-01 → 2008-10-09 (+647d) | 1d → 10d |  | none → 83 | resources none → 产品工程设计; 项目经理; baseline start none → 2008-09-17; baseline finish none → 2008-09-30 |
| 85 | 确定生产过程的要求 | 2007-01-01 → 2008-10-10 (+648d) | 2007-01-01 → 2008-10-23 (+661d) | 1d → 10d |  | none → 84 | resources none → 加工工程师; 生产工程师; baseline start none → 2008-10-01; baseline finish none → 2008-10-14 |
| 86 | 设计和定购新的设备 | 2007-01-01 → 2008-10-24 (+662d) | 2007-01-01 → 2008-12-04 (+703d) | 1d → 30d |  | none → 85 | resources none → 产品工程设计; 采购; baseline start none → 2008-10-15; baseline finish none → 2008-11-25 |
| 87 | 安装并测试新的设备或改装的设备 | 2007-01-01 → 2008-12-05 (+704d) | 2007-01-01 → 2009-01-15 (+745d) | 1d → 30d |  | none → 86 | resources none → 产品工程设计; 生产工程师; baseline start none → 2008-11-26; baseline finish none → 2009-01-06 |
| 88 | 确认生产能力 | 2007-01-01 → 2009-01-16 (+746d) | 2007-01-01 → 2009-01-29 (+759d) | 1d → 10d |  | none → 87 | resources none → 生产工程师; baseline start none → 2009-01-07; baseline finish none → 2009-01-20 |
| 89 | 制定并审查生产试验计划(解决后勤问题) | 2007-01-01 → 2009-01-30 (+760d) | 2007-01-01 → 2009-02-05 (+766d) | 1d → 5d |  | none → 88 | resources none → 产品工程设计; 项目经理; baseline start none → 2009-01-21; baseline finish none → 2009-01-27 |
| 90 | 开始商业产量的生产 | 2007-01-01 → 2009-02-06 (+767d) | 2007-01-01 → 2009-04-02 (+822d) | 1d → 40d |  | none → 89 | resources none → 产品工程设计; 生产工程师; baseline start none → 2009-01-28; baseline finish none → 2009-03-24 |
| 91 | 监控用户接受程度试验 | 2007-01-01 → 2009-04-03 (+823d) | 2007-01-01 → 2009-05-14 (+864d) | 1d → 30d |  | none → 90 | resources none → 产品工程设计; 项目经理; baseline start none → 2009-03-25; baseline finish none → 2009-05-05 |
| 92 | **商品化分析** | 2007-01-01 → 2009-04-03 (+823d) | 2007-01-01 → 2009-06-22 (+903d) | 1d → 63d |  |  | baseline start none → 2009-03-25; baseline finish none → 2009-06-11 |
| 93 | 进行内部产品测试 | 2007-01-01 → 2009-04-03 (+823d) | 2007-01-01 → 2009-04-23 (+843d) | 1d → 15d | 0d → 15d | none → 90 | resources none → 产品工程设计; baseline start none → 2009-03-25; baseline finish none → 2009-04-14 |
| 94 | 审查生产业绩 | 2007-01-01 → 2009-05-15 (+865d) | 2007-01-01 → 2009-05-28 (+878d) | 1d → 10d |  | none → 91, 93 | resources none → 管理人员; 产品工程设计; 项目经理; baseline start none → 2009-05-06; baseline finish none → 2009-05-19 |
| 95 | 确定长期生产需求 | 2007-01-01 → 2009-05-29 (+879d) | 2007-01-01 → 2009-06-18 (+899d) | 1d → 15d |  | none → 94 | resources none → 加工工程师; 生产工程师; baseline start none → 2009-05-20; baseline finish none → 2009-06-09 |
| 96 | 重新计算产品经济效益 | 2007-01-01 → 2009-05-29 (+879d) | 2007-01-01 → 2009-06-11 (+892d) | 1d → 10d | 0d → 5d | none → 94 | resources none → 产品工程设计; 市场; 会计; baseline start none → 2009-05-20; baseline finish none → 2009-06-02 |
| 97 | 确认继续进行商品化的决策 | 2007-01-01 → 2009-06-19 (+900d) | 2007-01-01 → 2009-06-22 (+903d) | 1d → 2d |  | none → 96, 95 | resources none → 管理人员; 项目经理; baseline start none → 2009-06-10; baseline finish none → 2009-06-11 |
| 98 | **商品化完成后的回顾** | 2007-01-01 → 2009-06-23 (+904d) | 2007-01-01 → 2009-12-21 (+1085d) | 1d → 143d |  |  | baseline start none → 2009-06-12; baseline finish none → 2009-12-10 |
| 99 | 确定产品是否达到用户对成本/性能比的期望 | 2007-01-01 → 2009-06-23 (+904d) | 2007-01-01 → 2009-09-14 (+987d) | 1d → 60d |  | none → 97 | resources none → 管理人员; 项目经理; baseline start none → 2009-06-12; baseline finish none → 2009-09-03 |
| 100 | 确定销售是否达到了预期值 | 2007-01-01 → 2009-06-23 (+904d) | 2007-01-01 → 2009-09-14 (+987d) | 1d → 60d | 0d → 40d | none → 99SS | resources none → 管理人员; 市场; baseline start none → 2009-06-12; baseline finish none → 2009-09-03 |
| 101 | 确定产品在竞争对手做出反应的情况下是否保持了市场份额 | 2007-01-01 → 2009-09-15 (+988d) | 2007-01-01 → 2009-10-26 (+1029d) | 1d → 30d | 0d → 40d | none → 100 | resources none → 管理人员; 市场; baseline start none → 2009-09-04; baseline finish none → 2009-10-15 |
| 102 | 评估生产过程的稳定性和成本效益 | 2007-01-01 → 2009-09-15 (+988d) | 2007-01-01 → 2009-11-09 (+1043d) | 1d → 40d |  | none → 99 | resources none → 项目经理; 生产工程师; baseline start none → 2009-09-04; baseline finish none → 2009-10-29 |
| 103 | 确定当前的经济状况是否与预期的经济状况相一致 | 2007-01-01 → 2009-11-10 (+1044d) | 2007-01-01 → 2009-11-30 (+1064d) | 1d → 15d |  | none → 102 | resources none → 市场; baseline start none → 2009-10-30; baseline finish none → 2009-11-19 |
| 104 | 评估扩大产品和产品线的可能性 | 2007-01-01 → 2009-12-01 (+1065d) | 2007-01-01 → 2009-12-21 (+1085d) | 1d → 15d |  | none → 103 | resources none → 管理人员; 产品工程设计; 市场; baseline start none → 2009-11-20; baseline finish none → 2009-12-10 |
